Schedule from MS Project, 2015-07-13 to 2015-12-03, costs in £.

## Calendars

- Standard: Mon-Fri 08:00-12:00, 13:00-17:00; Sat-Sun off.

## Resources

| Resource | Rate |
| --- | --- |
| Carole Poland | 250 |
| Color Setting Services |  |
| Copyeditors |  |
| John Evans | 62 |
| Katie Jordan | 48 |
| Printing Service |  |
| Robin Wood | 44 |
| Willian Flash | 55 |
| Carole Poland |  |

## Schedule

| ID | WBS | Task | Type | Duration | Start | Finish | Predecessors | Total slack | Free slack | Constraint | Resources | Work | Cost |
| --- | --- | --- | --- | --- | --- | --- | --- | --- | --- | --- | --- | --- | --- |
| 1 | 1 | **Children’s Gourmet Cookbook** |  | 104d | 2015-07-13 | 2015-12-03 |  |  |  |  |  | 760h | 69,680 |
| 2 | 1.1 | **Acquisition** |  | 25d | 2015-07-13 | 2015-08-14 |  |  |  |  |  | 200h | 50,000 |
| 3 | 1.1.1 | Manuscript received | milestone | 0d | 2015-07-13 | 2015-07-13 |  | 104d |  | start no earlier than 2015-07-13 | Carole Poland |  |  |
| 4 | 1.1.2 | Content edit |  | 25d | 2015-07-13 | 2015-08-14 | 3 | 79d | 0d | finish no earlier than 2015-08-14 | Carole Poland | 200h | 50,000 |
| 5 | 1.1.3 | Handoff to Editorial | milestone | 0d | 2015-08-14 | 2015-08-14 | 4 | 79d |  | start no earlier than 2015-08-14 | Carole Poland |  |  |
| 6 | 1.2 | **Editorial** |  | 30d | 2015-08-17 | 2015-09-25 |  | 49d |  |  |  | 240h | 3,520 |
| 7 | 1.2.1 | Organize manuscript for copyedit |  | 5d | 2015-08-17 | 2015-08-21 |  | 49d | 0d | finish no earlier than 2015-08-21 | Robin Wood | 40h | 1,760 |
| 8 | 1.2.2 | Copyedit |  | 20d | 2015-08-24 | 2015-09-18 | 7 | 49d | 0d | finish no earlier than 2015-09-18 | Copyeditors | 160h |  |
| 9 | 1.2.3 | Copyedit incorp |  | 5d | 2015-09-21 | 2015-09-25 | 8 | 49d | 0d | finish no earlier than 2015-09-25 | Robin Wood | 40h | 1,760 |
| 10 | 1.2.4 | Handoff to Production | milestone | 0d | 2015-09-25 | 2015-09-25 | 9 | 49d |  | start no earlier than 2015-09-25 |  |  |  |
| 11 | 1.3 | **Design and Production** |  | 30d | 2015-08-17 | 2015-09-25 |  | 49d |  |  |  | 320h | 16,160 |
| 12 | 1.3.1 | Cover design |  | 5d | 2015-08-17 | 2015-08-21 |  | 74d |  | start no earlier than 2015-08-17 | Willian Flash | 40h | 2,200 |
| 13 | 1.3.2 | Set pages |  | 10d | 2015-08-24 | 2015-09-04 | 12 | 64d |  | start no earlier than 2015-08-24 | Katie Jordan; Robin Wood | 160h | 7,360 |
| 14 | 1.3.3 | Illustrations Illustration design |  | 15d | 2015-09-07 | 2015-09-25 | 13 | 49d |  | start no earlier than 2015-08-24 | Willian Flash | 120h | 6,600 |
